# RLGame

Schedule from MS Project, 2022-08-01 to 2023-03-27, status date 2022-09-09, costs in $, A marks actual dates.

## Calendars

- Standard: Mon-Fri 08:00-12:00, 13:00-17:00; Sat-Sun off. Exceptions (off unless hours are given): 2022-10-01 08:00-12:00, 13:00-17:00.

## Resources

| Resource | Rate |
| --- | --- |
| Sarayut | 20 |
| Pusid | 20 |

## Schedule

| ID | WBS | Task | Type | Duration | Start | Finish | Predecessors | Complete | Remaining | Actual start | Baseline start | Baseline finish | Baseline duration | Baseline 1 start | Baseline 1 finish | Total slack | Free slack | Constraint | Resources | Work | Actual work | Cost | Baseline cost | Actual cost |
| --- | --- | --- | --- | --- | --- | --- | --- | --- | --- | --- | --- | --- | --- | --- | --- | --- | --- | --- | --- | --- | --- | --- | --- | --- |
| 1 | 1 | **การศึกษาและออกแบบ** |  | 12d | 2022-08-01 A | 2022-08-16 A |  | 100% |  |  | 2022-08-01 | 2022-08-16 | 12d | 2022-08-01 | 2022-08-16 |  |  |  |  | 192h | 192h | 3,840 | 3,840 | 3,840 |
| 2 | 1.1 | ศึกษาวิธีการพัฒนาและออกแบบเกม |  | 5d | 2022-08-01 A | 2022-08-05 A |  | 100% |  |  | 2022-08-01 | 2022-08-05 | 5d | 2022-08-01 | 2022-08-05 |  |  |  | Sarayut; Pusid | 80h | 80h | 1,600 | 1,600 | 1,600 |
| 3 | 1.2 | กำหนดขอบเขตของโครงงาน |  | 1d | 2022-08-08 A | 2022-08-08 A | 2 | 100% |  |  | 2022-08-08 | 2022-08-08 | 1d | 2022-08-08 | 2022-08-08 |  |  |  | Sarayut; Pusid | 16h | 16h | 320 | 320 | 320 |
| 4 | 1.3 | **Game Design** |  | 6d | 2022-08-09 A | 2022-08-16 A |  | 100% |  |  | 2022-08-09 | 2022-08-16 | 6d | 2022-08-09 | 2022-08-16 |  |  |  |  | 96h | 96h | 1,920 | 1,920 | 1,920 |
| 5 | 1.3.1 | กำหนดจุดมุ่งหมายของเกม |  | 0.5d | 2022-08-09 A | 2022-08-09 A | 3 | 100% |  |  | 2022-08-09 | 2022-08-09 | 0.5d | 2022-08-09 | 2022-08-09 |  |  |  | Sarayut; Pusid | 8h | 8h | 160 | 160 | 160 |
| 6 | 1.3.2 | ออกแบบระบบภายในเกม |  | 2d | 2022-08-09 A | 2022-08-11 A | 5 | 100% |  |  | 2022-08-09 | 2022-08-11 | 2d | 2022-08-09 | 2022-08-11 |  |  |  | Sarayut; Pusid | 32h | 32h | 640 | 640 | 640 |
| 7 | 1.3.3 | ออกแบบ Interface ของเกมและการควบคุม |  | 1d | 2022-08-11 A | 2022-08-12 A | 6 | 100% |  |  | 2022-08-11 | 2022-08-12 | 1d | 2022-08-11 | 2022-08-12 |  |  |  | Sarayut; Pusid | 16h | 16h | 320 | 320 | 320 |
| 8 | 1.3.4 | ออกแบบการสร้างด่านภายในเกม |  | 2d | 2022-08-12 A | 2022-08-16 A | 7 | 100% |  |  | 2022-08-12 | 2022-08-16 | 2d | 2022-08-12 | 2022-08-16 |  |  |  | Sarayut; Pusid | 32h | 32h | 640 | 640 | 640 |
| 9 | 1.3.5 | กำหนด Art Style ในเกม |  | 0.5d | 2022-08-16 A | 2022-08-16 A | 8 | 100% |  |  | 2022-08-16 | 2022-08-16 | 0.5d | 2022-08-16 | 2022-08-16 |  |  |  | Sarayut; Pusid | 8h | 8h | 160 | 160 | 160 |
| 10 | 2 | **เอกสารและเล่มรายงาน** |  | 127d | 2022-08-24 | 2023-02-15 |  | 26% | 93.58d | 2022-08-26 | 2022-08-24 | 2023-02-15 | 127d | 2022-08-24 | 2023-02-15 |  |  |  |  | 304h | 80h | 6,080 | 6,080 | 1,600 |
| 11 | 2.1 | จัดทำเอกสาร Game Design Document |  | 3d | 2022-08-31 A | 2022-09-02 A |  | 100% |  |  | 2022-09-01 | 2022-09-05 | 3d | 2022-09-01 | 2022-09-05 |  |  | start no earlier than 2022-09-01 | Sarayut; Pusid | 48h | 48h | 960 | 960 | 960 |
| 12 | 2.2 | **จัดทำเล่มรายงาน** |  | 125d | 2022-08-26 A | 2023-02-15 |  | 13% | 109.38d |  | 2022-08-26 | 2023-02-15 | 125d | 2022-08-26 | 2023-02-15 | 28d |  |  |  | 256h | 32h | 5,120 | 5,120 | 640 |
| 13 | 2.2.1 | รายงานบทที่ 1-3 |  | 8d | 2022-10-03 A | 2022-10-12 |  | 25% | 6d |  | 2022-10-03 | 2022-10-12 | 8d | 2022-10-03 | 2022-10-12 | 110d | 82d | start no earlier than 2022-10-03 | Sarayut; Pusid | 128h | 32h | 2,560 | 2,560 | 640 |
| 14 | 2.2.2 | รายงานบทที่ 4-5 |  | 8d | 2023-02-06 | 2023-02-15 | 13 |  |  |  | 2023-02-06 | 2023-02-15 | 8d | 2023-02-06 | 2023-02-15 | 28d |  | start no earlier than 2023-02-06 | Sarayut; Pusid | 128h |  | 2,560 | 2,560 |  |
| 15 | 2.2.3 | **รายงานความก้าวหน้า** |  | 66d | 2022-08-26 A | 2022-11-25 |  |  | 66d |  | 2022-08-26 | 2022-11-25 | 66d | 2022-08-26 | 2022-11-25 | 0d |  |  |  |  |  |  |  |  |
| 16 | 2.2.3.1 | รายงานความก้าวหน้าครั้งที่ 1 | milestone, manual | 0d | 2022-08-26 A | 2022-08-26 A |  | 100% |  |  | 2022-08-26 | 2022-08-26 | 0d | 2022-08-26 | 2022-08-26 |  |  |  | Pusid; Sarayut |  |  |  |  |  |
| 17 | 2.2.3.2 | รายงานความก้าวหน้าครั้งที่ 2 | milestone, manual | 0d | 2022-09-09 | 2022-09-09 |  |  |  |  | 2022-09-09 | 2022-09-09 | 0d | 2022-09-09 | 2022-09-09 |  |  |  | Pusid; Sarayut |  |  |  |  |  |
| 18 | 2.2.3.3 | รายงานความก้าวหน้าครั้งที่ 3 | milestone, manual | 0d | 2022-09-23 | 2022-09-23 |  |  |  |  | 2022-09-23 | 2022-09-23 | 0d | 2022-09-23 | 2022-09-23 |  |  |  | Pusid; Sarayut |  |  |  |  |  |
| 19 | 2.2.3.4 | รายงานความก้าวหน้าครั้งที่ 4 | milestone, manual | 0d | 2022-10-21 | 2022-10-21 |  |  |  |  | 2022-10-21 | 2022-10-21 | 0d | 2022-10-21 | 2022-10-21 |  |  |  | Pusid; Sarayut |  |  |  |  |  |
| 20 | 2.2.3.5 | รายงานความก้าวหน้าครั้งที่ 5 | milestone, manual | 0d | 2022-11-04 | 2022-11-04 |  |  |  |  | 2022-11-04 | 2022-11-04 | 0d | 2022-11-04 | 2022-11-04 |  |  |  | Pusid; Sarayut |  |  |  |  |  |
| 21 | 2.2.3.6 | รายงารความก้าวหน้าครั้งที่ 6 | milestone, manual | 0d | 2022-11-25 | 2022-11-25 |  |  |  |  | 2022-11-25 | 2022-11-25 | 0d | 2022-11-25 | 2022-11-25 |  |  |  | Pusid; Sarayut |  |  |  |  |  |
| 22 | 3 | **การพัฒนาตัวเกม** |  | 84d | 2022-08-17 A | 2022-12-09 |  | 21% | 66.65d |  | 2022-08-17 | 2022-12-09 | 84d | 2022-08-17 | 2022-12-09 |  |  |  |  | 752h | 168h | 15,040 | 15,040 | 3,360 |
| 23 | 3.1 | ศึกษาการใช้งานเกมเอนจิน Unity |  | 2d | 2022-08-17 A | 2022-08-18 A |  | 100% |  |  | 2022-08-17 | 2022-08-18 | 2d | 2022-08-17 | 2022-08-18 |  |  |  | Sarayut; Pusid | 32h | 32h | 640 | 640 | 640 |
| 24 | 3.2 | **Player** |  | 62d | 2022-08-19 A | 2022-11-11 |  | 67% | 20.67d |  | 2022-08-19 | 2022-11-11 | 62d | 2022-08-19 | 2022-11-11 | 96d |  |  |  | 48h | 32h | 960 | 960 | 640 |
| 25 | 3.2.1 | การควบคุมตัวละคร |  | 1d | 2022-08-19 A | 2022-08-19 A | 23 | 100% |  |  | 2022-08-19 | 2022-08-19 | 1d | 2022-08-19 | 2022-08-19 |  |  |  | Sarayut | 8h | 8h | 160 | 160 | 160 |
| 26 | 3.2.2 | ระบบกล้องตามตัวละคร |  | 1d | 2022-08-22 A | 2022-08-22 A | 25 | 100% |  |  | 2022-08-22 | 2022-08-22 | 1d | 2022-08-22 | 2022-08-22 |  |  |  | Pusid | 8h | 8h | 160 | 160 | 160 |
| 27 | 3.2.3 | ระบบ Level ของตัวละคร |  | 2d | 2022-11-10 | 2022-11-11 |  |  |  |  | 2022-11-10 | 2022-11-11 | 2d | 2022-11-10 | 2022-11-11 | 96d |  | start no earlier than 2022-11-10 | Pusid | 16h |  | 320 | 320 |  |
| 28 | 3.2.4 | Animation ของตัวละคร |  | 2d | 2022-08-22 A | 2022-08-23 A | 25 | 100% |  |  | 2022-08-22 | 2022-08-23 | 2d | 2022-08-22 | 2022-08-23 |  |  |  | Sarayut | 16h | 16h | 320 | 320 | 320 |

| ID | WBS | Task | Duration | Start | Finish | Predecessors | Complete | Remaining | Baseline start | Baseline finish | Baseline duration | Baseline 1 start | Baseline 1 finish | Total slack | Free slack | Constraint | Resources | Work | Actual work | Cost | Baseline cost | Actual cost |
| --- | --- | --- | --- | --- | --- | --- | --- | --- | --- | --- | --- | --- | --- | --- | --- | --- | --- | --- | --- | --- | --- | --- |
| 29 | 3.3 | **Combat System** | 36d | 2022-09-12 | 2022-10-28 |  |  |  | 2022-09-12 | 2022-10-28 | 36d | 2022-09-12 | 2022-10-28 |  |  |  |  | 168h |  | 3,360 | 3,360 |  |
| 30 | 3.3.1 | ทำระบบการต่อสู้ในเกม(ระบบการ์ดอาวุธ) | 11d | 2022-09-12 | 2022-09-26 |  |  |  | 2022-09-12 | 2022-09-26 | 11d | 2022-09-12 | 2022-09-26 | 107d | 0d |  | Pusid | 88h |  | 1,760 | 1,760 |  |
| 31 | 3.3.2 | ทำ Template การ์ดอาวุธ | 4d | 2022-10-14 | 2022-10-19 | 30FS+14d |  |  | 2022-10-14 | 2022-10-19 | 4d | 2022-10-14 | 2022-10-19 | 107d | 0d |  | Pusid | 32h |  | 640 | 640 |  |
| 32 | 3.3.3 | Animation การ์ดอาวุธ | 6d | 2022-10-20 | 2022-10-27 | 31 |  |  | 2022-10-20 | 2022-10-27 | 6d | 2022-10-20 | 2022-10-27 | 107d |  |  | Pusid | 48h |  | 960 | 960 |  |
| 33 | 3.4 | **Inventory & Equipment** | 6d | 2022-08-24 A | 2022-08-31 A |  | 100% |  | 2022-08-24 | 2022-08-31 | 6d | 2022-08-24 | 2022-08-31 |  |  |  |  | 48h | 48h | 960 | 960 | 960 |
| 34 | 3.4.1 | ทำ Template Item สำหรับของสวมใส่ | 1d | 2022-08-24 A | 2022-08-24 A | 28 | 100% |  | 2022-08-24 | 2022-08-24 | 1d | 2022-08-24 | 2022-08-24 |  |  |  | Pusid | 8h | 8h | 160 | 160 | 160 |
| 35 | 3.4.2 | ทำระบบ Inventory | 2d | 2022-08-25 A | 2022-08-26 A | 34 | 100% |  | 2022-08-25 | 2022-08-26 | 2d | 2022-08-25 | 2022-08-26 |  |  |  | Pusid | 16h | 16h | 320 | 320 | 320 |
| 36 | 3.4.3 | ทำระบบ Equipment | 2d | 2022-08-29 A | 2022-08-30 A | 35 | 100% |  | 2022-08-29 | 2022-08-30 | 2d | 2022-08-29 | 2022-08-30 |  |  |  | Pusid | 16h | 16h | 320 | 320 | 320 |
| 37 | 3.4.4 | ทำ UI สำหรับระบบ Inventory และ Equipment | 1d | 2022-08-31 A | 2022-08-31 A | 35, 36 | 100% |  | 2022-08-31 | 2022-08-31 | 1d | 2022-08-31 | 2022-08-31 |  |  |  | Pusid | 8h | 8h | 160 | 160 | 160 |
| 38 | 3.5 | **Status & Skill** | 19d | 2022-10-31 | 2022-11-24 |  |  |  | 2022-10-31 | 2022-11-24 | 19d | 2022-10-31 | 2022-11-24 |  |  |  |  | 128h |  | 2,560 | 2,560 |  |
| 39 | 3.5.1 | ทำ Parameter ของตัวละคร | 2d | 2022-10-31 | 2022-11-01 |  |  |  | 2022-10-31 | 2022-11-01 | 2d | 2022-10-31 | 2022-11-01 | 87d | 0d |  | Pusid | 16h |  | 320 | 320 |  |
| 40 | 3.5.2 | หน้า UI สำหรับดู Parameter ตัวละคร | 2d | 2022-11-02 | 2022-11-03 | 39 |  |  | 2022-11-02 | 2022-11-03 | 2d | 2022-11-02 | 2022-11-03 | 87d | 0d |  | Pusid | 16h |  | 320 | 320 |  |
| 41 | 3.5.3 | ระบบ การอัพ Status Point | 2d | 2022-11-04 | 2022-11-07 | 40 |  |  | 2022-11-04 | 2022-11-07 | 2d | 2022-11-04 | 2022-11-07 | 87d | 0d |  | Pusid | 16h |  | 320 | 320 |  |
| 42 | 3.5.4 | หน้า UI สำหรับการอัพ Status Point | 2d | 2022-11-08 | 2022-11-09 | 41 |  |  | 2022-11-08 | 2022-11-09 | 2d | 2022-11-08 | 2022-11-09 | 87d | 0d |  | Pusid | 16h |  | 320 | 320 |  |
| 43 | 3.5.5 | ระบบ Skill | 3d | 2022-11-15 | 2022-11-17 | 42FS+3d |  |  | 2022-11-15 | 2022-11-17 | 3d | 2022-11-15 | 2022-11-17 | 87d | 0d |  | Pusid | 24h |  | 480 | 480 |  |
| 44 | 3.5.6 | ออกแบบ และ ทำ Skill ต่างๆ | 3d | 2022-11-18 | 2022-11-22 | 43 |  |  | 2022-11-18 | 2022-11-22 | 3d | 2022-11-18 | 2022-11-22 | 87d | 0d |  | Pusid | 24h |  | 480 | 480 |  |
| 45 | 3.5.7 | หน้า UI คำอธิบาย Skill | 2d | 2022-11-23 | 2022-11-24 | 44 |  |  | 2022-11-23 | 2022-11-24 | 2d | 2022-11-23 | 2022-11-24 | 87d |  |  | Pusid | 16h |  | 320 | 320 |  |
| 46 | 3.6 | **Enemy** | 23d | 2022-08-24 A | 2022-09-23 |  | 35% | 14.95d | 2022-08-24 | 2022-09-23 | 23d | 2022-08-24 | 2022-09-23 |  |  |  |  | 160h | 56h | 3,200 | 3,200 | 1,120 |
| 47 | 3.6.1 | ทำ Template ของศัตรู | 3d | 2022-08-24 A | 2022-08-26 A |  | 100% |  | 2022-08-24 | 2022-08-26 | 3d | 2022-08-24 | 2022-08-26 |  |  |  | Sarayut | 24h | 24h | 480 | 480 | 480 |
| 48 | 3.6.2 | Animation ต่างๆของศัตรู | 3d | 2022-08-29 A | 2022-08-31 A | 47 | 100% |  | 2022-08-29 | 2022-08-31 | 3d | 2022-08-29 | 2022-08-31 |  |  |  | Sarayut | 24h | 24h | 480 | 480 | 480 |
| 49 | 3.6.3 | AI ของศัตรู | 2d | 2022-09-06 A | 2022-09-07 |  | 50% | 1d | 2022-09-06 | 2022-09-07 | 2d | 2022-09-06 | 2022-09-07 | 135d | 0d | start no earlier than 2022-09-06 | Sarayut | 16h | 8h | 320 | 320 | 160 |
| 50 | 3.6.4 | ระบบ Boss | 3d | 2022-09-08 | 2022-09-12 | 49 |  |  | 2022-09-08 | 2022-09-12 | 3d | 2022-09-08 | 2022-09-12 | 135d | 0d |  | Sarayut | 24h |  | 480 | 480 |  |
| 51 | 3.6.5 | Pattern การโจมตีของ Boss | 6d | 2022-09-13 | 2022-09-20 | 50 |  |  | 2022-09-13 | 2022-09-20 | 6d | 2022-09-13 | 2022-09-20 | 135d |  |  | Sarayut | 48h |  | 960 | 960 |  |
| 52 | 3.6.6 | สุ่มของ Drop จาก ศัตรูและ Boss | 3d | 2022-09-21 | 2022-09-23 | 47, 50 |  |  | 2022-09-21 | 2022-09-23 | 3d | 2022-09-21 | 2022-09-23 | 132d |  | start no earlier than 2022-09-21 | Sarayut | 24h |  | 480 | 480 |  |

| ID | WBS | Task | Duration | Start | Finish | Predecessors | Baseline start | Baseline finish | Baseline duration | Baseline 1 start | Baseline 1 finish | Total slack | Free slack | Constraint | Resources | Work | Cost | Baseline cost |
| --- | --- | --- | --- | --- | --- | --- | --- | --- | --- | --- | --- | --- | --- | --- | --- | --- | --- | --- |
| 53 | 3.7 | **Stage Generation** | 21d | 2022-10-13 | 2022-11-10 |  | 2022-10-13 | 2022-11-10 | 21d | 2022-10-13 | 2022-11-10 |  |  |  |  | 168h | 3,360 | 3,360 |
| 54 | 3.7.1 | Procedural Generation ในการกำหนด Route การเดินไปยังแต่ละห้อง | 2d | 2022-10-13 | 2022-10-14 |  | 2022-10-13 | 2022-10-14 | 2d | 2022-10-13 | 2022-10-14 | 97d | 0d |  | Sarayut | 16h | 320 | 320 |
| 55 | 3.7.2 | Pattern ของศัตรูที่จะสุ่มเกิดภายในห้อง | 2d | 2022-10-17 | 2022-10-18 | 54 | 2022-10-17 | 2022-10-18 | 2d | 2022-10-17 | 2022-10-18 | 97d | 0d |  | Sarayut | 16h | 320 | 320 |
| 56 | 3.7.3 | การทำ One-Way Platform | 2d | 2022-10-19 | 2022-10-20 | 55 | 2022-10-19 | 2022-10-20 | 2d | 2022-10-19 | 2022-10-20 | 97d | 0d |  | Sarayut | 16h | 320 | 320 |
| 57 | 3.7.4 | Pattern ของ Platform ที่จะใช้สุ่มเกิดภายในห้อง | 2d | 2022-10-21 | 2022-10-24 | 56 | 2022-10-21 | 2022-10-24 | 2d | 2022-10-21 | 2022-10-24 | 97d | 0d |  | Sarayut | 16h | 320 | 320 |
| 58 | 3.7.5 | สร้างจุดเกิดกล่องรางวัล เมื่อผ่านห้องนั้นๆ | 2d | 2022-10-25 | 2022-10-26 | 57 | 2022-10-25 | 2022-10-26 | 2d | 2022-10-25 | 2022-10-26 | 97d | 0d |  | Sarayut | 16h | 320 | 320 |
| 59 | 3.7.6 | ระบบแสงไฟต่างๆจากของประดับในฉาก | 5d | 2022-10-27 | 2022-11-02 | 58 | 2022-10-27 | 2022-11-02 | 5d | 2022-10-27 | 2022-11-02 | 97d | 0d |  | Sarayut | 40h | 800 | 800 |
| 60 | 3.7.7 | การสร้างเมืองเริ่มต้น (Lobby) | 6d | 2022-11-03 | 2022-11-10 | 59 | 2022-11-03 | 2022-11-10 | 6d | 2022-11-03 | 2022-11-10 | 97d |  |  | Sarayut | 48h | 960 | 960 |
| 61 | 4 | **การทดสอบตัวเกม** | 83d | 2022-12-01 | 2023-03-27 |  | 2022-12-01 | 2023-03-27 | 83d | 2022-12-01 | 2023-03-27 |  |  |  |  | 128h | 2,560 | 2,560 |
| 62 | 4.1 | **Build and Test** | 80d | 2022-12-01 | 2023-03-22 |  | 2022-12-01 | 2023-03-22 | 80d | 2022-12-01 | 2023-03-22 |  |  |  |  | 32h | 640 | 640 |
| 63 | 4.1.1 | build และ ทดสอบตัวเกมครั้งที่ 1 | 1d | 2022-12-01 | 2022-12-01 |  | 2022-12-01 | 2022-12-01 | 1d | 2022-12-01 | 2022-12-01 | 79d | 0d |  | Sarayut; Pusid | 16h | 320 | 320 |
| 64 | 4.1.2 | build และ ทดสอบตัวเกมครั้งที่ 2 | 1d | 2023-03-22 | 2023-03-22 |  | 2023-03-22 | 2023-03-22 | 1d | 2023-03-22 | 2023-03-22 | 0d |  | start no earlier than 2023-03-22 | Sarayut; Pusid | 16h | 320 | 320 |
| 65 | 4.2 | **Debug** | 82d | 2022-12-02 | 2023-03-27 |  | 2022-12-02 | 2023-03-27 | 82d | 2022-12-02 | 2023-03-27 | 0d |  |  |  | 96h | 1,920 | 1,920 |
| 66 | 4.2.1 | แก้ไข bug ที่พบหลังการทดสอบตัวเกมครั้งที่ 1 | 3d | 2022-12-02 | 2022-12-06 | 63 | 2022-12-02 | 2022-12-06 | 3d | 2022-12-02 | 2022-12-06 | 79d |  |  | Sarayut; Pusid | 48h | 960 | 960 |
| 67 | 4.2.2 | แก้ไข bug ที่พบหลังการทดสอบตัวเกมครั้งที่ 2 | 3d | 2023-03-23 | 2023-03-27 | 64 | 2023-03-23 | 2023-03-27 | 3d | 2023-03-23 | 2023-03-27 | 0d |  |  | Sarayut; Pusid | 48h | 960 | 960 |
| 68 | 5 | **การปรับปรุงตัวเกม** | 51d | 2023-01-10 | 2023-03-21 |  | 2023-01-10 | 2023-03-21 | 51d | 2023-01-10 | 2023-03-21 |  |  |  |  | 608h | 12,160 | 12,160 |
| 69 | 5.1 | เพิ่ม Background Music ภายในเกม | 7d | 2023-01-20 | 2023-01-30 |  | 2023-01-20 | 2023-01-30 | 7d | 2023-01-20 | 2023-01-30 | 40d |  | start no earlier than 2023-01-20 | Sarayut; Pusid | 112h | 2,240 | 2,240 |
| 70 | 5.2 | เพิ่มเสียงให้กับ Animation ต่างๆในเกม | 3d | 2023-02-01 | 2023-02-03 |  | 2023-02-01 | 2023-02-03 | 3d | 2023-02-01 | 2023-02-03 | 36d |  | start no earlier than 2023-02-01 | Sarayut; Pusid | 48h | 960 | 960 |
| 71 | 5.3 | ปรับปรุง UI และ Art ภายในเกม | 7d | 2023-02-17 | 2023-02-27 |  | 2023-02-17 | 2023-02-27 | 7d | 2023-02-17 | 2023-02-27 | 20d |  | start no earlier than 2023-02-17 | Sarayut; Pusid | 112h | 2,240 | 2,240 |
| 72 | 5.4 | เพิ่ม Game Stage Environment ของแต่ละ Stage | 7d | 2023-01-10 | 2023-01-18 |  | 2023-01-10 | 2023-01-18 | 7d | 2023-01-10 | 2023-01-18 | 48d |  | start no earlier than 2023-01-10 | Sarayut; Pusid | 112h | 2,240 | 2,240 |
| 73 | 5.5 | เพิ่มการ์ดอาวุธของเกม | 7d | 2023-02-28 | 2023-03-08 |  | 2023-02-28 | 2023-03-08 | 7d | 2023-02-28 | 2023-03-08 | 13d |  | start no earlier than 2023-02-28 | Sarayut; Pusid | 112h | 2,240 | 2,240 |
| 74 | 5.6 | ปรับสมดุลของเกม | 7d | 2023-03-13 | 2023-03-21 |  | 2023-03-13 | 2023-03-21 | 7d | 2023-03-13 | 2023-03-21 | 4d |  | start no earlier than 2023-03-13 | Sarayut; Pusid | 112h | 2,240 | 2,240 |
